Schedule from MS Project, 2026-02-02 to 2028-01-04, costs in $.

## Calendars

- Standard: Mon-Fri 08:00-12:00, 13:00-17:00; Sat-Sun off.

## Resources

| Resource | Group | Rate |
| --- | --- | --- |
| Architect | Consultant | 9 |
| Draftsperson | Staff | 7 |
| Building Clerk | Staff | 8 |
| Supervisor | Staff | 12 |
| Rigger | Wages | 5 |
| Boilermaker | Wages | 5 |
| Welder | Wages | 6 |
| Carpenter | Wages | 7 |
| Painter | Wages | 6 |
| Labourer | Wages | 6 |
| Driver | Wages | 8 |
| No Barrier Fencing | Contractor | 3 |
| Rock Solid Concrete | Contractor | 4 |
| Listen Ear Audio | Contractor | 5 |
| In Focus Video | Contractor | 5 |
| Pure Grass Turf | Contractor | 5 |
| Building Inspector | Government | 5 |
| High Jib Crane | Equipment | 7 |
| Grader | Equipment | 6 |
| Air Compressor | Equipment | 7 |
| Utility | Equipment | 5 |
| Electrician | Staff | 7 |
| Plumber | Staff | 5 |
| Astro Turf | Material | 12 |
| Paint | Ute | 20 |

## Schedule

| ID | WBS | Task | Type | Duration | Start | Finish | Predecessors | Total slack | Free slack | Resources | Work | Cost |
| --- | --- | --- | --- | --- | --- | --- | --- | --- | --- | --- | --- | --- |
| 1 | 1 | **Planning** |  | 88d | 2026-02-02 | 2026-06-03 |  | 0d |  |  | 648h | 5,280 |
| 2 | 1.1 | Creating architectural plans |  | 12w | 2026-02-02 | 2026-04-24 |  | 0d |  | Architect; Building Clerk [25%]; Draftsperson [200%] | 360h | 2,880 |
| 3 | 1.2 | Submit plans for approval |  | 1mo | 2026-04-27 | 2026-05-22 | 2 | 0d |  | Architect | 160h | 1,440 |
| 4 | 1.3 | Order materials |  | 8d | 2026-05-25 | 2026-06-03 | 3 | 0d |  | Building Clerk; Draftsperson | 128h | 960 |
| 5 | 1.4 | Planning Completed | milestone | 0d | 2026-06-03 | 2026-06-03 | 2, 3, 4 | 0d |  |  |  |  |
| 6 | 2 | **Site Works** |  | 32d | 2026-06-04 | 2026-07-17 |  | 0d |  |  | 640h | 5,432 |
| 7 | 2.1 | Erect fencing |  | 3d | 2026-06-04 | 2026-06-08 | 5 | 0d |  | No Barrier Fencing | 24h | 72 |
| 8 | 2.2 | Erect site building |  | 4d | 2026-06-09 | 2026-06-12 | 7 | 0d |  | Carpenter [400%]; Labourer; Supervisor | 96h | 800 |
| 9 | 2.3 | Clear and level site |  | 3w | 2026-06-15 | 2026-07-03 | 8 | 0d |  | Driver [200%]; Grader [200%]; Supervisor | 360h | 3,120 |
| 10 | 2.4 | Prepare drainage infrastructure |  | 2w | 2026-07-06 | 2026-07-17 | 9 | 0d |  | Plumber [200%]; Supervisor [50%] | 80h | 680 |
| 11 | 2.5 | Prepare cabling infrastructure |  | 2w | 2026-07-06 | 2026-07-17 | 9 | 0d |  | Electrician [300%]; Supervisor [50%] | 80h | 760 |
| 12 | 2.6 | Site Works Completed | milestone | 0d | 2026-07-17 | 2026-07-17 | 7, 8, 9, 10, 11 | 0d |  |  |  |  |
| 13 | 3 | **Building Construction** |  | 334d | 2026-07-20 | 2027-10-28 |  | 0d |  |  | 8392h | 58,208 |
| 14 | 3.1 | Pour foundations |  | 4d | 2026-07-20 | 2026-07-23 | 12 | 0d |  | Rock Solid Concrete | 32h | 128 |
| 15 | 3.2 | Erect steelwork |  | 6mo | 2026-07-24 | 2027-01-07 | 14 | 0d |  | Boilermaker [600%]; Driver [200%]; High Jib Crane; Labourer [600%]; Rigger [600%]; Supervisor [50%]; Utility; Welder [500%] | 3840h | 25,920 |
| 16 | 3.3 | Erect wal |  | 8mo | 2027-01-08 | 2027-08-19 | 15 | 0d |  | Carpenter [700%]; Labourer [400%]; Supervisor [50%]; Air Compressor; Driver; Electrician [75%]; Grader; Plumber [25%] | 2560h | 18,560 |
| 17 | 3.4 | Install roofing superstructure |  | 4w | 2027-08-20 | 2027-09-16 | 16 | 0d |  | Air Compressor; Boilermaker [500%]; Driver [200%]; High Jib Crane; Labourer [500%]; Plumber [50%]; Rigger [500%]; Supervisor [50%]; Welder [300%] | 720h | 4,880 |
| 18 | 3.5 | Install roofing retracting mechanism |  | 2w | 2027-09-17 | 2027-09-30 | 17 | 0d |  | Boilermaker [200%]; Driver; Electrician [200%]; High Jib Crane; Rigger [200%]; Supervisor [50%]; Welder | 280h | 2,000 |
| 19 | 3.6 | Erect seating tiers |  | 6w | 2027-09-17 | 2027-10-28 | 18SS | 0d |  | Boilermaker [200%]; Carpenter [800%]; Driver; Labourer [500%]; Supervisor [50%]; Utility; Welder [200%]; Air Compressor | 960h | 6,720 |
| 20 | 3.7 | Building Construction Completed | milestone | 0d | 2027-10-28 | 2027-10-28 | 14, 15, 16, 17, 18, 19 | 0d |  |  |  |  |
| 21 | 4 | **Fit Out** |  | 14d | 2027-10-29 | 2027-11-17 |  | 0d |  |  | 1040h | 6,120 |
| 22 | 4.1 | Fit all windows and doors |  | 1w | 2027-10-29 | 2027-11-04 | 20 | 9d |  | Carpenter [500%]; Labourer [200%] | 160h | 1,040 |
| 23 | 4.2 | Install electrical cabling |  | 0.5w | 2027-10-29 | 2027-11-02 | 20 | 3.5d | 0d | Electrician [300%]; Labourer [200%] | 80h | 520 |
| 24 | 4.3 | Install electrical fittings and fixtures |  | 0.67w | 2027-11-02 | 2027-11-05 | 23 | 8.17d |  | Electrician [300%] | 80h | 560 |
| 25 | 4.4 | Install all plumbing |  | 1w | 2027-10-29 | 2027-11-04 | 20 | 6.5d | 0d | Labourer [200%]; Plumber [200%] | 160h | 880 |
| 26 | 4.5 | Install plumbing fixtures and fittings |  | 0.5w | 2027-11-05 | 2027-11-09 | 25 | 6.5d |  | Plumber [200%] | 40h | 200 |
| 27 | 4.6 | Lay astro turf |  | 1w | 2027-10-29 | 2027-11-04 | 20 | 9d |  | Pure Grass Turf | 40h | 200 |
| 28 | 4.7 | Erect handrails and fencing |  | 1w | 2027-10-29 | 2027-11-04 | 20 | 0d |  | Boilermaker [200%]; Welder [400%] | 160h | 880 |
| 29 | 4.8 | Paint rooms, fixtures,fittings, etc. |  | 0.2mo | 2027-11-05 | 2027-11-10 | 28 | 0d |  | Painter [500%] | 160h | 960 |
| 30 | 4.9 | Install PA system |  | 2d | 2027-11-02 | 2027-11-04 | 23 | 4.5d |  | Listen Ear Audio | 16h | 80 |
| 31 | 4.10 | Install video imaging equipment |  | 3d | 2027-11-02 | 2027-11-05 | 23 | 3.5d |  | In Focus Video | 24h | 120 |
| 32 | 4.11 | Fit out control room |  | 1w | 2027-11-11 | 2027-11-17 | 29, 30, 31 | 0d |  | Electrician [200%]; In Focus Video; Listen Ear Audio | 120h | 680 |
| 33 | 4.12 | Fit Out Completed | milestone | 0d | 2027-11-17 | 2027-11-17 | 22, 23, 24, 25, 26, 27, 28, 29, 30, 31, 32 | 0d |  |  |  |  |

| ID | WBS | Task | Type | Duration | Start | Finish | Predecessors | Total slack | Resources | Work | Cost |
| --- | --- | --- | --- | --- | --- | --- | --- | --- | --- | --- | --- |
| 34 | 5 | **Commissioning** |  | 34d | 2027-11-18 | 2028-01-04 |  | 0d |  | 400h | 3,160 |
| 35 | 5.1 | Test roof mechanism |  | 1w | 2027-11-18 | 2027-11-24 | 33 | 0d | Electrician [200%]; Rigger; Supervisor | 120h | 960 |
| 36 | 5.2 | Test PA system |  | 2d | 2027-11-18 | 2027-11-19 | 33 | 3d | Listen Ear Audio | 16h | 80 |
| 37 | 5.3 | Test video imaging equipment |  | 2d | 2027-11-18 | 2027-11-19 | 33 | 3d | In Focus Video | 16h | 80 |
| 38 | 5.4 | Test control room equipment |  | 5w | 2027-11-25 | 2027-12-29 | 35, 36, 37 | 0d | Architect; Electrician [200%]; In Focus Video [20%]; Listen Ear Audio [20%]; Supervisor | 200h | 1,520 |
| 39 | 5.5 | Obtain official occupancy |  | 1d | 2027-12-30 | 2027-12-30 | 38 | 0d | Architect; Building Clerk; Supervisor | 24h | 232 |
| 40 | 5.6 | Obtain safety certification |  | 2d | 2027-12-31 | 2028-01-03 | 39 | 0d | Supervisor | 16h | 192 |
| 41 | 5.7 | Official opening |  | 1d | 2028-01-04 | 2028-01-04 | 40 | 0d | Supervisor | 8h | 96 |
| 42 | 5.8 | Commissioning Completed | milestone | 0d | 2028-01-04 | 2028-01-04 | 35, 36, 37, 38, 39, 40, 41 | 0d | Supervisor [200%] |  |  |
